# Nach.exe

Schedule from MS Project, 2019-05-27 to 2020-09-01, status date 2019-09-20, 6 hours a day, costs in $, A marks actual dates.

## Calendars

- Copia de Estándar: Mon-Fri 09:00-13:00, 15:00-19:00; Sat-Sun off. Exceptions (off unless hours are given): 2019-05-30 (jueves satno), 2019-05-31 (viernes santo), 2019-06-03 (dia de la ascension), 2019-06-24 (Carpus Christi), 2019-07-01 (san pedro san pablo), 2019-07-05 to 2019-07-22 (vacaciones), 2019-08-07 (batalla de boyaca), 2019-08-19 (dia de la asunsion), 2019-10-14 (celebracion), 2019-11-04 (dia de todos los santos), 2019-12-08 (inmaculada), 2019-12-20 to 2020-01-06 (vacaciones de navidad).

## Resources

| Resource | Rate |
| --- | --- |
| Jorge Villarreal | 213 |
| Alejanro Galindo | 213 |
| Felipe Nuñez | 213 |
| Staling Marin | 213 |
| Diego Rivas |  |

## Schedule

| ID | WBS | Task | Type | Duration | Start | Finish | Predecessors | Complete | Remaining | Actual start | Total slack | Free slack | Constraint | Resources | Work | Actual work | Cost | Actual cost |
| --- | --- | --- | --- | --- | --- | --- | --- | --- | --- | --- | --- | --- | --- | --- | --- | --- | --- | --- |
| 1 | 1 | **Projecto** |  | 398.67d? | 2019-05-27 A | 2020-09-01 |  | 14% | 341.83d? |  |  |  |  | Alejanro Galindo; Felipe Nuñez; Jorge Villarreal; Staling Marin; Diego Rivas | 27081.8h | 4072.31h | 4,777,002.14 | 800,906.43 |
| 2 | 1.1 | **1. Analisis** |  | 15.5d | 2019-05-27 A | 2019-06-14 |  | 63% | 5.81d |  |  |  |  | Alejanro Galindo; Felipe Nuñez; Jorge Villarreal | 654h | 518h | 139,302.02 | 110,334.02 |
| 3 | 1.1.1 | **1.1 Componenete metodologico** |  | 13.5d | 2019-05-27 A | 2019-06-12 |  | 60% | 5.4d |  |  |  |  | Alejanro Galindo; Felipe Nuñez; Jorge Villarreal | 292h | 174h | 62,196 | 37,062 |
| 4 | 1.1.1.1 | 1.1.1 Sistema de información para gestionar inventarios (Euro Bodas) | manual | 6h | 2019-05-27 | 2019-05-27 |  |  |  |  |  |  | start no earlier than 2019-05-27 | Jorge Villarreal | 6h |  | 1,278 |  |
| 5 | 1.1.1.2 | 1.1.2 Objetivo general |  | 6h | 2019-06-05 A | 2019-06-05 A | 4 | 100% |  |  |  |  | start no earlier than 2019-06-04 | Felipe Nuñez | 6h | 6h | 1,278 | 1,278 |
| 6 | 1.1.1.3 | 1.1.3 Objetivos especificos |  | 12h | 2019-06-06 A | 2019-06-07 | 5 | 67% | 4h |  | 2d | 0.67d | finish no earlier than 2019-06-06 | Alejanro Galindo | 12h | 8h | 2,556 | 1,704 |
| 7 | 1.1.1.4 | 1.1.4 Planeacion del problema |  | 12h | 2019-06-10 A | 2019-06-11 | 6 | 67% | 4h |  | 387.33d |  | finish no earlier than 2019-06-07 | Jorge Villarreal | 12h | 8h | 2,556 | 1,704 |
| 8 | 1.1.1.5 | 1.1.5 Alcance del proyecto |  | 8h | 2019-06-11 A | 2019-06-11 A | 7 | 100% |  |  |  |  | finish no earlier than 2019-06-10 | Alejanro Galindo | 8h | 8h | 1,704 | 1,704 |
| 9 | 1.1.1.6 | 1.1.6 Justificacion |  | 6h | 2019-06-12 | 2019-06-12 | 8 |  |  |  | 385.67d |  | finish no earlier than 2019-06-10 | Felipe Nuñez | 6h |  | 1,278 |  |
| 10 | 1.1.2 | **1.2 Levantamiento de informacion** |  | 0.83d | 2019-06-14 A | 2019-06-14 |  | 83% | 0.14d |  |  |  |  | Alejanro Galindo; Felipe Nuñez; Jorge Villarreal | 11h | 8h | 2,343 | 1,704 |
| 11 | 1.1.2.1 | 1.2.1 Entrevistas | manual | 4h | 2019-06-14 A | 2019-06-14 A |  | 100% |  |  |  |  | start no earlier than 2019-06-14 | Jorge Villarreal | 4h | 4h | 852 | 852 |
| 12 | 1.1.2.2 | 1.2.2 Observacion |  | 1h | 2019-06-14 A | 2019-06-14 | 11 |  | 1h |  | 383.67d |  |  | Alejanro Galindo | 1h |  | 213 |  |
| 13 | 1.1.2.3 | 1.2.3 Conclusiones |  | 1h | 2019-06-14 A | 2019-06-14 A | 12 | 100% |  |  |  |  |  | Felipe Nuñez | 1h | 1h | 213 | 213 |
| 14 | 1.2 | **2. Planeacion** |  | 78.63d | 2019-06-18 | 2019-09-30 |  | 35% | 51.11d | 2019-06-19 |  |  |  | Alejanro Galindo; Diego Rivas; Felipe Nuñez; Jorge Villarreal; Staling Marin | 4248.8h | 1595.54h | 747,042.12 | 284,336.01 |
| 15 | 1.2.1 | **2.1 Informe de Requerimientos(estandar IEEE830)** |  | 4d | 2019-06-19 A | 2019-06-24 A |  | 100% |  |  |  |  |  | Alejanro Galindo; Diego Rivas; Felipe Nuñez; Jorge Villarreal; Staling Marin | 141h | 141h | 24,069 | 24,069 |
| 16 | 1.2.1.1 | 2.1.1 Requerimientos funcionales | manual | 6h | 2019-06-19 A | 2019-06-19 A |  | 100% |  |  |  |  | start no earlier than 2019-06-19 | Alejanro Galindo; Jorge Villarreal | 12h | 12h | 2,556 | 2,556 |
| 17 | 1.2.1.2 | 2.1.2 Requerimientos no funcionales | manual | 4h | 2019-06-20 A | 2019-06-20 A | 16 | 100% |  |  |  |  | start no earlier than 2019-06-20 | Diego Rivas | 4h | 4h |  |  |
| 18 | 1.2.1.3 | 2.1.3 Diagrama de casos de uso |  | 5h | 2019-06-21 A | 2019-06-21 A | 17 | 100% |  |  |  |  |  | Felipe Nuñez | 5h | 5h | 1,065 | 1,065 |
| 19 | 1.2.1.4 | 2.1.4 Casos de uso | milestone | 0h | 2019-06-24 A | 2019-06-24 A | 18 | 100% |  |  |  |  |  | Staling Marin |  |  |  |  |
| 20 | 1.2.2 | **2.2 Mapa de procesos** |  | 4d | 2019-06-25 A | 2019-06-27 A |  | 100% |  |  |  |  |  | Jorge Villarreal; Staling Marin | 64h | 64h | 13,632 | 13,632 |
| 21 | 1.2.2.1 | 2.2.1 Mapa de procesos | manual | 2.67d | 2019-06-25 A | 2019-06-26 A |  | 100% |  |  |  |  | finish no earlier than 2019-06-26 | Jorge Villarreal | 16h | 16h | 3,408 | 3,408 |
| 22 | 1.2.2.2 | 2.2.2 Diagrama de flujo de procesos | milestone, manual | 0d | 2019-06-26 A | 2019-06-27 A |  | 100% |  |  |  |  | start no earlier than 2019-06-26 | Staling Marin |  |  |  |  |
| 23 | 1.2.3 | **2.3 Modelo Entidad Relacion** |  | 11d | 2019-09-10 A | 2019-09-20 |  | 44% | 6.11d |  | 311.67d |  |  | Alejanro Galindo; Diego Rivas; Felipe Nuñez; Jorge Villarreal; Staling Marin | 156h | 70.67h | 29,394 | 13,348.04 |
| 24 | 1.2.3.1 | 2.3.1 Modelo relacional |  | 18h | 2019-09-10 A | 2019-09-12 |  | 44% | 10h |  | 2.33d | 1d |  | Alejanro Galindo; Felipe Nuñez | 36h | 16h | 7,668 | 3,408 |
| 25 | 1.2.3.2 | 2.3.2 Normalizacion de la base de datos |  | 18h | 2019-09-13 A | 2019-09-17 | 24 | 44% | 10h |  | 2.33d | 1d |  | Diego Rivas; Jorge Villarreal | 36h | 16h | 3,834 | 1,704 |
| 26 | 1.2.3.3 | 2.3.3 Diccionario de datos |  | 18h | 2019-09-18 A | 2019-09-20 | 25 | 44% | 10h |  | 311.67d |  |  | Staling Marin | 18h | 8h | 3,834 | 1,704 |

| ID | WBS | Task | Type | Duration | Start | Finish | Predecessors | Complete | Remaining | Total slack | Free slack | Resources | Work | Actual work | Cost | Actual cost |
| --- | --- | --- | --- | --- | --- | --- | --- | --- | --- | --- | --- | --- | --- | --- | --- | --- |
| 27 | 1.2.4 | **2.4 Modelo Logico** |  | 0.5d | 2019-09-23 A | 2019-09-23 A |  | 100% |  |  |  | Jorge Villarreal; Staling Marin | 18h | 18h | 3,834 | 3,834 |
| 28 | 1.2.4.1 | 2.4.1 Diagrama de clases | manual | 6h | 2019-09-23 A | 2019-09-23 A |  | 100% |  |  |  | Jorge Villarreal; Staling Marin | 12h | 12h | 2,556 | 2,556 |
| 29 | 1.2.5 | **2.5 Prototipo no funcional del sistema** |  | 18.13d | 2019-09-11 A | 2019-09-30 |  | 7% | 16.8d | 303.2d |  | Alejanro Galindo; Diego Rivas; Felipe Nuñez; Jorge Villarreal; Staling Marin | 958.9h | 79.92h | 163,396.56 | 13,617.8 |
| 30 | 1.2.5.1 | 2.5.1 Mockups de la aplicación |  | 109h | 2019-09-11 A | 2019-09-30 |  | 7% | 101h | 303.2d |  | Alejanro Galindo; Diego Rivas; Felipe Nuñez; Jorge Villarreal; Staling Marin | 415h | 40h | 70,716 | 6,816 |
| 31 | 1.2.6 | **2.6 Diagrama de distribucion** |  | 3.33d | 2019-09-16 A | 2019-09-18 |  | 40% | 2d | 314d |  | Diego Rivas; Felipe Nuñez | 80h | 32h | 8,520 | 3,408 |
| 32 | 1.2.6.1 | 2.6.1 Diagrama de distribucion |  | 20h | 2019-09-16 A | 2019-09-18 |  | 40% | 12h | 314d |  | Diego Rivas; Felipe Nuñez | 40h | 16h | 4,260 | 1,704 |
| 33 | 1.3 | **3. Ejecucion** |  | 121.33d | 2019-11-04 A | 2020-03-25 |  | 4% | 116.8d |  |  | Alejanro Galindo; Diego Rivas; Felipe Nuñez; Jorge Villarreal; Staling Marin | 8852h | 240.33h | 1,570,236 | 40,207.92 |
| 34 | 1.3.1 | **3.1 Base de Datos** |  | 11.67d | 2019-11-04 A | 2019-11-15 |  | 33% | 7.78d | 260.33d |  | Diego Rivas; Felipe Nuñez; Jorge Villarreal | 370h | 88h | 52,398 | 13,632 |
| 35 | 1.3.1.1 | 3.1.1 Contruccion de la base de datos |  | 18h | 2019-11-04 A | 2019-11-06 |  | 44% | 10h | 2.33d | 1d | Felipe Nuñez; Jorge Villarreal | 36h | 16h | 7,668 | 3,408 |
| 36 | 1.3.1.2 | 3.1.2 Datos insertados en la base de datos |  | 24h | 2019-11-07 A | 2019-11-11 | 35 | 33% | 16h | 1.33d | 0d | Diego Rivas; Jorge Villarreal | 48h | 16h | 5,112 | 1,704 |
| 37 | 1.3.1.3 | 3.1.3 Consultas y joins en la base de datos |  | 30h | 2019-11-12 A | 2019-11-15 | 36 | 27% | 22h | 260.33d |  | Diego Rivas; Felipe Nuñez | 60h | 16h | 6,390 | 1,704 |
| 38 | 1.3.2 | **3.2 Interfaz grafica de usuario** |  | 45.83d | 2019-11-20 | 2020-01-22 |  |  |  |  |  | Alejanro Galindo; Staling Marin | 850h |  | 181,050 |  |
| 39 | 1.3.2.1 | 3.2.1 Maquetación de la aplicación (HTML). | manual | 30h | 2020-01-08 | 2020-01-13 |  |  |  |  |  | Alejanro Galindo; Staling Marin | 60h |  | 12,780 |  |
| 40 | 1.3.2.2 | 3.2.2 Implementación de estilos |  | 24h | 2020-01-13 | 2020-01-16 | 39 |  |  | 218.17d |  | Alejanro Galindo; Staling Marin | 48h |  | 10,224 |  |
| 41 | 1.3.3 | **3.3 Codificación y manejo de CRUD.** |  | 83.67d | 2019-11-04 | 2020-02-17 |  |  |  | 10d |  | Diego Rivas; Felipe Nuñez; Alejanro Galindo; Jorge Villarreal; Staling Marin | 3608h |  | 634,740 |  |
| 42 | 1.3.3.1 | 3.3.1 Conexión base de datos |  | 44h | 2019-11-04 | 2019-11-11 |  |  |  | 187.33d | 0d | Diego Rivas; Staling Marin | 72h |  | 7,668 |  |
| 43 | 1.3.3.2 | 3.3.2 CRUD funcional: módulos del sistema. |  | 24h | 2019-11-11 | 2019-11-14 | 42 |  |  | 187.33d | 0d | Alejanro Galindo; Felipe Nuñez | 48h |  | 10,224 |  |
| 44 | 1.3.3.3 | 3.3.2.1 Iniciar sesión. | manual | 18h | 2019-11-14 | 2019-11-18 | 43 |  |  |  |  | Felipe Nuñez | 18h |  | 3,834 |  |
| 45 | 1.3.3.4 | 3.3.2.2 Registrar el usuario. | manual | 12h | 2019-11-18 | 2019-11-20 | 44 |  |  |  |  | Jorge Villarreal | 12h |  | 2,556 |  |
| 46 | 1.3.3.5 | 3.3.2.3 Registrar al cliente. | manual | 12h | 2019-11-20 | 2019-11-21 | 45 |  |  |  |  | Diego Rivas | 12h |  |  |  |
| 47 | 1.3.3.6 | 3.3.2.4 Restaurar contraseña | manual | 18h | 2019-11-21 | 2019-11-25 | 46 |  |  |  |  | Alejanro Galindo | 18h |  | 3,834 |  |
| 48 | 1.3.3.7 | 3.3.2.5 Cambiar contraseña. | manual | 14h | 2019-11-26 | 2019-11-27 | 47 |  |  |  |  | Staling Marin | 14h |  | 2,982 |  |
| 49 | 1.3.3.8 | 3.3.2.6 Cerrar sesión. | manual | 14h | 2019-11-27 | 2019-11-29 | 48 |  |  |  |  | Jorge Villarreal | 14h |  | 2,982 |  |
| 50 | 1.3.3.9 | 3.3.2.7 Registrar solicitud de evento | manual | 18h | 2019-11-29 | 2019-12-03 | 49 |  |  |  |  | Felipe Nuñez | 18h |  | 3,834 |  |
| 51 | 1.3.3.10 | 3.3.2.8 Notificar confirmación de evento. | manual | 12h | 2019-12-03 | 2019-12-05 | 50 |  |  |  |  | Diego Rivas | 12h |  |  |  |
| 52 | 1.3.3.11 | 3.3.2.9 Consultar presupuesto. | manual | 16h | 2019-12-05 | 2019-12-09 | 51 |  |  |  |  | Alejanro Galindo | 16h |  | 3,408 |  |
| 53 | 1.3.3.12 | 3.3.2.10 Diligenciar datos del evento | manual | 18h | 2019-12-09 | 2019-12-11 | 52 |  |  |  |  | Felipe Nuñez; Jorge Villarreal | 36h |  | 7,668 |  |
| 54 | 1.3.3.13 | 3.3.2.11 Cancelar evento. | manual | 12h | 2019-12-11 | 2019-12-12 | 53 |  |  |  |  | Alejanro Galindo | 12h |  | 2,556 |  |
| 55 | 1.3.3.14 | 3.3.2.12 Registrar personal de logística | manual | 14h | 2019-12-13 | 2019-12-16 | 54 |  |  |  |  | Staling Marin | 14h |  | 2,982 |  |
| 56 | 1.3.3.15 | 3.3.2.13 Registrar proveedores | manual | 14h | 2019-12-16 | 2019-12-18 | 55 |  |  |  |  | Diego Rivas | 14h |  |  |  |
| 57 | 1.3.3.16 | 3.3.2.14 Consultar personal disponible | manual | 18h | 2019-12-18 | 2019-12-20 | 56 |  |  |  |  | Alejanro Galindo | 18h |  | 3,834 |  |
| 58 | 1.3.3.17 | 3.3.2.15 Registrar Elementos requeridos | manual | 14h | 2020-01-07 | 2020-01-08 | 57 |  |  |  |  | Felipe Nuñez | 14h |  | 2,982 |  |
| 59 | 1.3.3.18 | 3.3.2.16 Asociar personal a evento. | manual | 14h | 2020-01-08 | 2020-01-10 | 58 |  |  |  |  | Diego Rivas | 14h |  |  |  |
| 60 | 1.3.3.19 | 3.3.2.17 Consultar personal del evento | manual | 18h | 2020-01-10 | 2020-01-14 | 59 |  |  |  |  | Alejanro Galindo | 18h |  | 3,834 |  |
| 61 | 1.3.3.20 | 3.3.2.18 Modificar personal del evento | manual | 16h | 2020-01-14 | 2020-01-16 | 60 |  |  |  |  | Staling Marin | 16h |  | 3,408 |  |
| 62 | 1.3.3.21 | 3.3.2.19 Consultar datos personalizables | manual | 18h | 2020-01-16 | 2020-01-20 | 61 |  |  |  |  | Jorge Villarreal | 18h |  | 3,834 |  |
| 63 | 1.3.3.22 | 3.3.2.20 Modificar datos personalizables | manual | 14h | 2020-01-21 | 2020-01-22 | 62 |  |  |  |  | Diego Rivas | 14h |  |  |  |
| 64 | 1.3.3.23 | 3.3.2.21 Registrar el PQR. | manual | 16h | 2020-01-22 | 2020-01-24 | 63 |  |  |  |  | Felipe Nuñez | 16h |  | 3,408 |  |
| 65 | 1.3.3.24 | 3.3.2.22 Consultar sugerencia | manual | 18h | 2020-01-24 | 2020-01-28 | 64 |  |  |  |  | Alejanro Galindo | 18h |  | 3,834 |  |
| 66 | 1.3.3.25 | 3.3.2.23 Notificar sugerencias del cliente | manual | 14h | 2020-01-29 | 2020-01-30 | 65 |  |  |  |  | Staling Marin | 14h |  | 2,982 |  |
| 67 | 1.3.3.26 | 3.3.2.24 Registrar cotización final del evento | manual | 36h | 2020-01-30 | 2020-02-06 | 66 |  |  |  |  | Felipe Nuñez; Jorge Villarreal; Staling Marin | 108h |  | 23,004 |  |
| 68 | 1.3.3.27 | 3.3.2.25 Consultar cotización final. | manual | 24h | 2020-02-06 | 2020-02-11 | 67 |  |  |  |  | Alejanro Galindo; Diego Rivas | 48h |  | 5,112 |  |
| 69 | 1.3.3.28 | 3.3.2.26 Asociar elementos. | manual | 18h | 2020-02-11 | 2020-02-13 | 68 |  |  |  |  | Jorge Villarreal | 18h |  | 3,834 |  |
| 70 | 1.3.3.29 | 3.3.2.27 Registrar tarifa. | manual | 18h | 2020-02-13 | 2020-02-17 | 69 |  |  |  |  | Alejanro Galindo | 18h |  | 3,834 |  |

| ID | WBS | Task | Type | Duration | Start | Finish | Predecessors | Total slack | Resources | Work | Cost |
| --- | --- | --- | --- | --- | --- | --- | --- | --- | --- | --- | --- |
| 71 | 1.4 | **Evaluacion** |  | 4.83d | 2020-03-02 | 2020-03-05 |  | 0d | Alejanro Galindo; Diego Rivas; Felipe Nuñez; Jorge Villarreal; Staling Marin | 335h | 57,510 |
| 72 | 1.4.1 | **4.1 modelo de calida** |  | 4.83d | 2020-03-02 | 2020-03-05 |  | 0d | Staling Marin; Felipe Nuñez | 190h | 32,802 |
| 73 | 1.4.1.1 | 4.1.1 gestion de pruebas | manual | 12h | 2020-03-02 | 2020-03-03 |  |  | Staling Marin; Felipe Nuñez | 24h | 5,112 |
| 74 | 1.4.1.2 | **4.2 Construccion de manuales** |  | 4d | 2020-03-03 | 2020-03-05 |  |  | Alejanro Galindo; Diego Rivas; Jorge Villarreal | 108h | 15,336 |
| 75 | 1.4.1.2.1 | 4.2.1 Manual de Usuario | manual | 12h | 2020-03-03 | 2020-03-04 |  |  | Alejanro Galindo; Diego Rivas | 24h | 2,556 |
| 76 | 1.4.1.2.2 | 4.2.2 Manual de Inatalacion | manual | 12h | 2020-03-04 | 2020-03-05 | 75 |  | Jorge Villarreal | 12h | 2,556 |
